# 项目计划_四人仿真

How a schedule from MS Project changed from version to version. A marks actual dates.

## Version 1 (saved 2026-10-14)

Note of the change: docs(cm): 整理CM-R0项目计划历史基线（存档补录）

| ID | WBS | Task | Duration | Start | Finish | Predecessors | Total float | Constraint |
| --- | --- | --- | --- | --- | --- | --- | --- | --- |
| 1 | 1 | **云南省企业就业失业数据采集系统（4人8周仿真计划）** | 40d? | 2026-10-19 | 2026-12-11 |  |  |  |
| 2 | 1.1 | **T1 需求与项目计划** | 4d? | 2026-10-19 | 2026-10-22 |  | 0d |  |
| 3 |  | 核对需求范围与覆盖 | 1d? | 2026-10-19 | 2026-10-19 |  | 0d | start no earlier than 2026-10-19 |
| 4 |  | 形成WBS与项目计划初稿 | 2d? | 2026-10-20 | 2026-10-21 | 3 | 0d | start no earlier than 2026-10-20 |
| 5 |  | 编写测试大纲与合成数据方案 | 3d? | 2026-10-20 | 2026-10-22 | 3 | 27d | start no earlier than 2026-10-20 |
| 6 | 1.2 | **T2 设计、外部输入与计划维护** | 38d? | 2026-10-20 | 2026-12-10 |  | 0d |  |
| 7 |  | 总体架构与模块设计 | 2d? | 2026-10-20 | 2026-10-21 | 3 | 10d | start no earlier than 2026-10-20 |
| 8 |  | 数据模型、版本与事务设计 | 2d? | 2026-10-22 | 2026-10-23 | 7 | 11d | start no earlier than 2026-10-22 |
| 9 |  | 内部接口与导出契约设计 | 2d? | 2026-10-22 | 2026-10-23 | 7 | 10d | start no earlier than 2026-10-22 |
| 10 |  | 确认国家真实交换输入 | 3d? | 2026-10-26 | 2026-10-28 | 3 | 21d | start no earlier than 2026-10-26 |
| 11 |  | 维护计划与配置版本 | 36d? | 2026-10-22 | 2026-12-10 | 4 | 0d | start no earlier than 2026-10-22 |
| 12 | 1.3 | **T3 开发与运行环境** | 20d? | 2026-10-23 | 2026-11-19 |  | 8d |  |
| 13 |  | 建立开发与本地集成环境 | 2d? | 2026-10-23 | 2026-10-26 | 7 | 9d | start no earlier than 2026-10-23 |
| 14 |  | 实现认证、权限和角色基础 | 3d? | 2026-10-27 | 2026-10-29 | 9, 13 | 9d | start no earlier than 2026-10-27 |
| 15 |  | 实现字典、地区和基准管理 | 2d? | 2026-10-27 | 2026-10-28 | 8, 13 | 10d | start no earlier than 2026-10-27 |
| 16 |  | 实现企业资料与备案审批 | 3d? | 2026-10-30 | 2026-11-03 | 14, 15 | 10d | start no earlier than 2026-10-30 |
| 17 |  | 实现月报草稿、校验与提交 | 3d? | 2026-11-03 | 2026-11-05 | 16SS+1d, 19 | 9d | start no earlier than 2026-11-03 |
| 18 |  | 实现市省审核与退回重提 | 2d? | 2026-11-04 | 2026-11-05 | 17SS+1d | 9d | start no earlier than 2026-11-04 |
| 19 |  | 实现调查期与补报授权 | 2d? | 2026-10-30 | 2026-11-02 | 14, 15 | 9d | start no earlier than 2026-10-30 |
| 20 |  | 实现独立修订与撤销链 | 3d? | 2026-11-06 | 2026-11-10 | 18SS+1d, 8 | 8d | start no earlier than 2026-11-06 |
| 21 |  | 实现历史浏览和快照查询 | 2d? | 2026-11-06 | 2026-11-09 | 16, 17SS+1d | 10d | start no earlier than 2026-11-06 |
| 22 |  | 实现汇总指标与统计口径 | 2d? | 2026-11-10 | 2026-11-11 | 20SS+1d | 8d | start no earlier than 2026-11-10 |
| 23 |  | 实现条件查询与XLSX导出 | 3d? | 2026-11-09 | 2026-11-11 | 21SS+1d, 9 | 10d | start no earlier than 2026-11-09 |
| 24 |  | 实现各市取样与地区筛选 | 2d? | 2026-11-18 | 2026-11-19 | 16, 15 | 4d | start no earlier than 2026-11-18 |
| 25 |  | 实现两期比较与连续期趋势 | 3d? | 2026-11-17 | 2026-11-19 | 22SS+1d | 4d | start no earlier than 2026-11-17 |
| 26 |  | 实现通知与用户管理界面 | 2d? | 2026-11-16 | 2026-11-17 | 14 | 5d | start no earlier than 2026-11-16 |
| 27 |  | 实现删除恢复、脱敏与审计 | 3d? | 2026-11-11 | 2026-11-13 | 20 | 8d | start no earlier than 2026-11-11 |
| 28 |  | 实现运行监控与指标采集 | 2d? | 2026-10-30 | 2026-11-02 | 13, 9 | 17d | start no earlier than 2026-10-30 |
| 29 |  | 实现批次冻结与MOCK交换 | 3d? | 2026-11-12 | 2026-11-16 | 22SS+1d, 9 | 7d | start no earlier than 2026-11-12 |
| 30 |  | 实现实际REAL协议适配 | 3d? | 2026-11-12 | 2026-11-16 | 10, 9 | 11d | start no earlier than 2026-11-12 |
| 31 |  | 编写配置、部署、备份与回滚 | 3d? | 2026-10-27 | 2026-10-29 | 13, 8 | 19d | start no earlier than 2026-10-27 |
| 32 | 1.4 | **T4 集成、测试与回归** | 15d? | 2026-11-17 | 2026-12-07 |  | 1d |  |
| 33 |  | 评审主业务链阶段成果 | 1d? | 2026-11-20 | 2026-11-20 | 18, 19, 26 | 3d | start no earlier than 2026-11-20 |
| 34 |  | 完成本地模块集成 | 2d? | 2026-11-23 | 2026-11-24 | 23, 25, 27, 28, 29, 31, 33, 24 | 3d | start no earlier than 2026-11-23 |
| 35 |  | 执行业务功能与边界测试 | 3d? | 2026-11-30 | 2026-12-02 | 34, 5 | 1d | start no earlier than 2026-11-30 |
| 36 |  | 验证MOCK回执与黄金摘要 | 2d? | 2026-11-17 | 2026-11-18 | 29, 5 | 11d | start no earlier than 2026-11-17 |
| 37 |  | 完成实际国家交换验证 | 2d? | 2026-11-19 | 2026-11-20 | 30, 10 | 9d | start no earlier than 2026-11-19 |
| 38 |  | 验证安全、认证和并发一致性 | 3d? | 2026-11-25 | 2026-11-27 | 34, 5 | 4d | start no earlier than 2026-11-25 |
| 39 |  | 执行容量、性能与导出测试 | 3d? | 2026-11-25 | 2026-11-27 | 34, 5 | 4d | start no earlier than 2026-11-25 |
| 40 |  | 验证备份恢复与72小时运行 | 4d? | 2026-11-27 | 2026-12-02 | 34, 31 | 1d | start no earlier than 2026-11-27 |
| 41 |  | 验证兼容、部署与监控 | 2d? | 2026-11-25 | 2026-11-26 | 34, 28, 31 | 5d | start no earlier than 2026-11-25 |
| 42 |  | 修复缺陷并复核需求覆盖 | 3d? | 2026-12-03 | 2026-12-07 | 35, 36, 38, 39, 40, 41, 37 | 1d | start no earlier than 2026-12-03 |
| 43 | 1.5 | **T5 部署、交付与计划定稿** | 15d? | 2026-11-23 | 2026-12-11 |  | 0d |  |
| 44 |  | 部署拟定试运行环境 | 2d? | 2026-11-23 | 2026-11-24 | 34SS, 31 | 10d | start no earlier than 2026-11-23 |
| 45 |  | 安排业务试运行与反馈 | 2d? | 2026-12-08 | 2026-12-09 | 42, 44 | 1d | start no earlier than 2026-12-08 |
| 46 |  | 编写操作与开发维护说明 | 4d? | 2026-11-30 | 2026-12-03 | 33, 5 | 3d | start no earlier than 2026-11-30 |
| 47 |  | 安排操作培训与演示 | 1d? | 2026-12-10 | 2026-12-10 | 42, 46 | 0d | start no earlier than 2026-12-10 |
| 48 |  | 整理代码、配置和验证证据 | 2d? | 2026-12-08 | 2026-12-09 | 42, 46 | 1d | start no earlier than 2026-12-08 |
| 49 |  | 完成最终项目验收 | 1d? | 2026-12-11 | 2026-12-11 | 45, 47, 48, 37 | 0d | start no earlier than 2026-12-11 |
| 50 |  | 汇总8周模拟的最终项目计划 | 1d? | 2026-12-11 | 2026-12-11 | 4, 11, 49SS | 0d | start no earlier than 2026-12-11 |
| 51 | 1.6 | **T6 分周费用安排（不占用团队人时）** | 40d? | 2026-10-19 | 2026-12-11 |  | 0d |  |
| 52 |  | W1非人工与间接费用 | 5d? | 2026-10-19 | 2026-10-23 |  | 35d | start no earlier than 2026-10-19 |
| 53 |  | W2非人工与间接费用 | 5d? | 2026-10-26 | 2026-10-30 |  | 30d | start no earlier than 2026-10-26 |
| 54 |  | W3非人工与间接费用 | 5d? | 2026-11-02 | 2026-11-06 |  | 25d | start no earlier than 2026-11-02 |
| 55 |  | W4非人工与间接费用 | 5d? | 2026-11-09 | 2026-11-13 |  | 20d | start no earlier than 2026-11-09 |
| 56 |  | W5非人工与间接费用 | 5d? | 2026-11-16 | 2026-11-20 |  | 15d | start no earlier than 2026-11-16 |
| 57 |  | W6非人工与间接费用 | 5d? | 2026-11-23 | 2026-11-27 |  | 10d | start no earlier than 2026-11-23 |
| 58 |  | W7非人工与间接费用 | 5d? | 2026-11-30 | 2026-12-04 |  | 5d | start no earlier than 2026-11-30 |
| 59 |  | W8非人工与间接费用 | 5d? | 2026-12-07 | 2026-12-11 |  | 0d | start no earlier than 2026-12-07 |

## Version 2 (saved 2026-10-20)

Note of the change: docs(plan): CR-003完善成本估算与逐周控制（CM-R3）

Last finish stays 2026-12-11.

Changed:

| ID | Task | Other |
| --- | --- | --- |
| 52 | W1非人工与间接费用 | resources C06 开发/测试部署资源 [0.1%]; C07 AI算力与Token [0.1%]; C08 开发工具与软件许可 [0.1%]; C09 设备租用与折旧分摊 [0.1%]; C11 一般管理人员费用分摊 [0.1%]; C12 房租水电及网络分摊 [0.1%]; C13 共享办公与设施分摊 [0.1%] → C06 开发/测试部署资源 [0.1%]; C07 自动化工具与算力额度 [0.1%]; C08 开发工具与软件许可 [0.1%]; C09 设备租用与折旧分摊 [0.1%]; C11 一般管理人员费用分摊 [0.1%]; C12 房租水电及网络分摊 [0.1%]; C13 共享办公与设施分摊 [0.1%] |
| 53 | W2非人工与间接费用 | resources C06 开发/测试部署资源 [0.1%]; C07 AI算力与Token [0.1%]; C09 设备租用与折旧分摊 [0.1%]; C11 一般管理人员费用分摊 [0.1%]; C12 房租水电及网络分摊 [0.1%]; C13 共享办公与设施分摊 [0.1%] → C06 开发/测试部署资源 [0.1%]; C07 自动化工具与算力额度 [0.1%]; C09 设备租用与折旧分摊 [0.1%]; C11 一般管理人员费用分摊 [0.1%]; C12 房租水电及网络分摊 [0.1%]; C13 共享办公与设施分摊 [0.1%] |
| 54 | W3非人工与间接费用 | resources C06 开发/测试部署资源 [0.1%]; C07 AI算力与Token [0.1%]; C09 设备租用与折旧分摊 [0.1%]; C11 一般管理人员费用分摊 [0.1%]; C12 房租水电及网络分摊 [0.1%]; C13 共享办公与设施分摊 [0.1%] → C06 开发/测试部署资源 [0.1%]; C07 自动化工具与算力额度 [0.1%]; C09 设备租用与折旧分摊 [0.1%]; C11 一般管理人员费用分摊 [0.1%]; C12 房租水电及网络分摊 [0.1%]; C13 共享办公与设施分摊 [0.1%] |
| 55 | W4非人工与间接费用 | resources C06 开发/测试部署资源 [0.1%]; C07 AI算力与Token [0.1%]; C09 设备租用与折旧分摊 [0.1%]; C11 一般管理人员费用分摊 [0.1%]; C12 房租水电及网络分摊 [0.1%]; C13 共享办公与设施分摊 [0.1%] → C06 开发/测试部署资源 [0.1%]; C07 自动化工具与算力额度 [0.1%]; C09 设备租用与折旧分摊 [0.1%]; C11 一般管理人员费用分摊 [0.1%]; C12 房租水电及网络分摊 [0.1%]; C13 共享办公与设施分摊 [0.1%] |
| 56 | W5非人工与间接费用 | resources C06 开发/测试部署资源 [0.1%]; C07 AI算力与Token [0.1%]; C09 设备租用与折旧分摊 [0.1%]; C11 一般管理人员费用分摊 [0.1%]; C12 房租水电及网络分摊 [0.1%]; C13 共享办公与设施分摊 [0.1%] → C06 开发/测试部署资源 [0.1%]; C07 自动化工具与算力额度 [0.1%]; C09 设备租用与折旧分摊 [0.1%]; C11 一般管理人员费用分摊 [0.1%]; C12 房租水电及网络分摊 [0.1%]; C13 共享办公与设施分摊 [0.1%] |
| 57 | W6非人工与间接费用 | resources C06 开发/测试部署资源 [0.1%]; C07 AI算力与Token [0.1%]; C09 设备租用与折旧分摊 [0.1%]; C11 一般管理人员费用分摊 [0.1%]; C12 房租水电及网络分摊 [0.1%]; C13 共享办公与设施分摊 [0.1%] → C06 开发/测试部署资源 [0.1%]; C07 自动化工具与算力额度 [0.1%]; C09 设备租用与折旧分摊 [0.1%]; C11 一般管理人员费用分摊 [0.1%]; C12 房租水电及网络分摊 [0.1%]; C13 共享办公与设施分摊 [0.1%] |
| 58 | W7非人工与间接费用 | resources C06 开发/测试部署资源 [0.1%]; C07 AI算力与Token [0.1%]; C09 设备租用与折旧分摊 [0.1%]; C11 一般管理人员费用分摊 [0.1%]; C12 房租水电及网络分摊 [0.1%]; C13 共享办公与设施分摊 [0.1%] → C06 开发/测试部署资源 [0.1%]; C07 自动化工具与算力额度 [0.1%]; C09 设备租用与折旧分摊 [0.1%]; C11 一般管理人员费用分摊 [0.1%]; C12 房租水电及网络分摊 [0.1%]; C13 共享办公与设施分摊 [0.1%] |
| 59 | W8非人工与间接费用 | resources C06 开发/测试部署资源 [0.1%]; C07 AI算力与Token [0.1%]; C09 设备租用与折旧分摊 [0.1%]; C10 部署培训及必要差旅 [0.1%]; C11 一般管理人员费用分摊 [0.1%]; C12 房租水电及网络分摊 [0.1%]; C13 共享办公与设施分摊 [0.1%] → C06 开发/测试部署资源 [0.1%]; C07 自动化工具与算力额度 [0.1%]; C09 设备租用与折旧分摊 [0.1%]; C10 部署培训及必要差旅 [0.1%]; C11 一般管理人员费用分摊 [0.1%]; C12 房租水电及网络分摊 [0.1%]; C13 共享办公与设施分摊 [0.1%] |
